# HomeRenovation

Schedule from MS Project, 2025-03-03 to 2026-03-27, costs in $.

## Calendars

- Home Renovation Calender: Mon-Fri 07:00-11:00, 12:00-16:00; Sat-Sun off. Exceptions (off unless hours are given): 2025-03-24 (National Orange Day), 2025-03-26 (Memorial Day), 2025-07-04 (Independence Day), 2025-09-01 (Labor Day), 2025-10-31 (Halloween), 2025-11-27 to 2025-11-28 (Thanksgiving Holiday), 2025-12-24 to 2025-12-25 (Christmas Holiday), 2026-01-01 (New Year Day).

## Resources

| Resource | Rate |
| --- | --- |
| GL-1 | 20 |
| GL-2 | 25 |
| GL-3 | 30 |
| GL-4 | 35 |
| C-1 | 60 |
| C-2 | 70 |
| C-3 | 80 |
| C-4 | 90 |
| C-5 | 100 |
| R-1 | 40 |
| R-2 | 50 |
| R-3 | 60 |
| R-4 | 70 |
| PL-1 | 85 |
| PL-2 | 95 |
| PL-3 | 105 |
| PL-4 | 115 |
| F-1 | 50 |
| F-2 | 60 |
| F-3 | 70 |
| F-4 | 80 |
| EL-1 | 85 |
| EL-2 | 95 |
| EL-3 | 105 |
| M-1 | 65 |
| M-2 | 75 |
| M-3 | 85 |
| PT-1 | 60 |
| PT-2 | 70 |
| EX-1 | 55 |
| EX-2 | 65 |
| DWT-2 | 60 |
| II | 60 |
| EE | 62.5 |
| WD | 800 |
| D | 400 |
| GD | 3000 |
| C | 25 |
| HWF | 16 |
| TL | 7000 |
| CS-1 | 175000 |
| CS-2 | 50000 |
| LTG | 10000 |
| HAC | 22000 |
| CT | 7500 |
| KC | 25000 |
| KBF | 15000 |
| DW | 18 |
| MB | 5 |
| R | 30000 |
| I | 10000 |
| P | 65 |
| RG | 4000 |
| DWT-1 | 50 |
| Tiler | 60 |
| KA | 15000 |
| LM | 6000 |
| You |  |
| Architect |  |
| Surveyor |  |
| Contractor |  |
| Village Board Officials |  |
| Supplier |  |
| M-4 | 95 |
| GL-6 | 45 |
| GL-5 | 40 |

## Schedule

| ID | WBS | Task | Duration | Start | Finish | Predecessors | Total slack | Free slack | Resources | Work | Cost |
| --- | --- | --- | --- | --- | --- | --- | --- | --- | --- | --- | --- |
| 1 | 1 | **Rural Heritage Renovation Project** | 269.79d? | 2025-03-03 | 2026-03-27 |  | 0d |  |  | 8344h | 1,020,451 |
| 2 | 1.1 | **Project Initiation** | 91d? | 2025-03-03 | 2025-07-11 |  | 0d |  |  |  | 10,060 |
| 3 | 1.1.1 | **Hire a Architect** | 27d | 2025-03-03 | 2025-04-11 |  | 0d |  | You [0.1%] |  | 7,500 |
| 4 | 1.1.1.1 | Architectural Drawing | 20d | 2025-03-03 | 2025-04-02 |  | 0d |  | Architect [0.1%]; You [0.1%] |  | 5,000 |
| 5 | 1.1.1.2 | Arhitectural Plan Review | 5d | 2025-04-02 | 2025-04-09 | 4 | 0d |  | Architect [0.1%]; You [0.1%] |  |  |
| 6 | 1.1.1.3 | Work Site Survey | 2d | 2025-04-09 | 2025-04-11 | 5 | 0d |  | Architect [0.1%]; Surveyor [0.1%]; You [0.1%] |  | 2,500 |
| 7 | 1.1.2 | **Hire Contractor** | 33d | 2025-04-11 | 2025-05-28 |  | 0d |  | Architect [0.1%]; You [0.1%] |  | 60 |
| 8 | 1.1.2.1 | Project Biding | 30d | 2025-04-11 | 2025-05-23 | 6 | 0d |  | You [0.1%] |  |  |
| 9 | 1.1.2.2 | Sign Contract | 2d | 2025-05-23 | 2025-05-27 | 8 | 0d |  | You [0.1%]; Contractor [0.1%] |  | 60 |
| 10 | 1.1.2.3 | Final Site Survey | 1d | 2025-05-27 | 2025-05-28 | 9 | 0d |  | Architect [0.1%]; You [0.1%]; Contractor [0.1%] |  |  |
| 11 | 1.1.3 | **Permit acquisition** | 31d? | 2025-05-28 | 2025-07-11 |  | 0d |  |  |  | 2,500 |
| 12 | 1.1.3.1 | Permit application submission | 1d? | 2025-05-28 | 2025-05-29 | 10 | 0d |  | You [0.1%] |  |  |
| 13 | 1.1.3.2 | Permit Approval | 30d | 2025-05-29 | 2025-07-11 | 12 | 0d |  | Village Board Officials [0.1%] |  | 2,500 |
| 14 | 1.1.4 | **Loan** | 30d | 2025-05-28 | 2025-07-10 |  | 1d |  |  |  |  |
| 15 | 1.1.4.1 | Loan appliation | 5d | 2025-05-28 | 2025-06-04 | 10 | 1d | 0d | You [0.1%] |  |  |
| 16 | 1.1.4.2 | Loan approval | 25d | 2025-06-04 | 2025-07-10 | 15 | 1d |  | You [0.1%] |  |  |
| 17 | 1.2 | **Project Planning** | 124.67d? | 2025-05-29 | 2025-11-24 |  | 84.12d |  |  |  | 10,000 |
| 18 | 1.2.1 | **Scope identification** | 1d | 2025-05-29 | 2025-05-30 |  | 84.12d |  |  |  |  |
| 19 | 1.2.1.1 | Condition of Satisfaction | 1d | 2025-05-29 | 2025-05-30 | 13SS | 84.12d | 0d | Contractor [0.1%]; You [0.1%] |  |  |
| 20 | 1.2.1.2 | Quality Plan | 1d | 2025-05-29 | 2025-05-30 | 13SS | 84.12d | 0d | Architect [0.1%]; Contractor [0.1%]; You [0.1%] |  |  |
| 21 | 1.2.2 | **WBS** | 4d | 2025-05-30 | 2025-06-05 |  | 84.12d |  |  |  |  |
| 22 | 1.2.2.1 | Task Finalization | 2d | 2025-05-30 | 2025-06-03 | 19, 20 | 84.12d | 0d | Contractor [0.1%] |  |  |
| 23 | 1.2.2.2 | Develop WBS | 2d | 2025-06-03 | 2025-06-05 | 22 | 84.12d | 0d | Contractor [0.1%] |  |  |
| 24 | 1.2.3 | **Resource Management Plan** | 10d | 2025-06-05 | 2025-06-19 |  | 84.12d |  |  |  |  |
| 25 | 1.2.3.1 | Skill Assesment | 1d | 2025-06-05 | 2025-06-06 | 23 | 84.12d | 0d | Contractor [0.1%] |  |  |
| 26 | 1.2.3.2 | Hire Sub-contractor | 7d | 2025-06-06 | 2025-06-17 | 23, 25 | 84.12d | 0d | Contractor [0.1%] |  |  |
| 27 | 1.2.3.3 | Sequence Activity | 2d | 2025-06-17 | 2025-06-19 | 26 | 84.12d | 0d | Contractor [0.1%] |  |  |

Notes:
- 3: Hire a good architect with experience working on this home renovation project.
- 6: Contact a site Surveyor.
- 7: Hire an experienced contractor with a good bid that fits the project's budget. Check for the availability of the dates & make sure the schedule aligns well.
- 11: Apply for the permits well in advance to avoid any delays in the further task.

| ID | WBS | Task | Duration | Start | Finish | Predecessors | Total slack | Free slack | Resources | Work | Cost |
| --- | --- | --- | --- | --- | --- | --- | --- | --- | --- | --- | --- |
| 28 | 1.2.4 | **Schedule management** | 8d | 2025-06-19 | 2025-07-01 |  | 84.12d |  |  |  |  |
| 29 | 1.2.4.1 | Duration Estimaton | 2d | 2025-06-19 | 2025-06-23 | 27 | 84.12d | 0d | Contractor [0.1%]; You [0.1%] |  |  |
| 30 | 1.2.4.2 | Cost Estimation | 3d | 2025-06-23 | 2025-06-26 | 29 | 84.12d | 0d | Contractor [0.1%]; You [0.1%] |  |  |
| 31 | 1.2.4.3 | Develop Activity Schedule | 2d | 2025-06-26 | 2025-06-30 | 30, 29 | 84.12d | 0d | Contractor [0.1%] |  |  |
| 32 | 1.2.4.4 | Schedule Review | 1d | 2025-06-30 | 2025-07-01 | 31 | 84.12d | 0d | You [0.1%] |  |  |
| 33 | 1.2.5 | **Procurement Plan** | 92.67d | 2025-07-01 | 2025-11-11 |  | 84.12d |  |  |  |  |
| 34 | 1.2.5.1 | Material identification | 3d | 2025-07-01 | 2025-07-07 | 32 | 84.12d | 0d | Architect [0.1%]; Contractor [0.1%]; You [0.1%] |  |  |
| 35 | 1.2.5.2 | Contract with the suppliers | 7d | 2025-07-07 | 2025-11-11 | 34 | 84.12d | 0d | Contractor [0.1%]; Supplier [0.1%] |  |  |
| 36 | 1.2.6 | **Cost Management Plan** | 111.67d? | 2025-06-17 | 2025-11-24 |  | 84.12d |  |  |  | 10,000 |
| 37 | 1.2.6.1 | Material Budget | 5d | 2025-11-11 | 2025-11-18 | 34, 35 | 84.12d | 0d | Contractor [0.1%] |  |  |
| 38 | 1.2.6.2 | Labor cost estimation | 95.79d | 2025-06-17 | 2025-10-30 | 25, 26 | 96d | 11.88d | Contractor [0.1%] |  |  |
| 39 | 1.2.6.3 | Project Budget Estimation | 2d | 2025-11-18 | 2025-11-20 | 37, 38, 22 | 84.12d | 0d | Contractor [0.1%] |  |  |
| 40 | 1.2.6.4 | Budget Review | 1d | 2025-11-20 | 2025-11-21 | 39 | 84.12d | 0d | Contractor [0.1%]; You [0.1%] |  |  |
| 41 | 1.2.6.5 | Milestone Review 1 | 1d? | 2025-11-21 | 2025-11-24 | 40 | 84.12d |  | You [0.1%]; Contractor [0.1%] |  | 10,000 |
| 42 | 1.3 | **Project Execution** | 178.79d? | 2025-06-16 | 2026-03-03 |  | 18d |  |  | 8344h | 990,391 |
| 43 | 1.3.1 | **Site Prep** | 15.88d | 2025-07-11 | 2025-08-01 |  | 0d |  |  | 424h | 14,460 |
| 44 | 1.3.1.1 | Kickoff meeting | 1d | 2025-07-11 | 2025-07-14 | 13, 16 | 0d |  | Architect [0.1%]; Contractor [0.1%]; You [0.1%] |  |  |
| 45 | 1.3.1.2 | Demolition | 10d | 2025-07-14 | 2025-07-25 | 44 | 103d | 0.12d | GL-1; GL-2; GL-3; GL-4 | 320h | 8,800 |
| 46 | 1.3.1.3 | Digging Foundation | 2d | 2025-07-28 | 2025-07-29 | 45 | 102.33d | 0.12d | EX-1; EE | 32h | 1,880 |
| 47 | 1.3.1.4 | Site Exavation | 3d | 2025-07-30 | 2025-08-01 | 46 | 162.79d |  | GL-3; EE; EX-2 | 72h | 3,780 |
| 48 | 1.3.2 | **Procurement Plan** | 25d | 2025-07-11 | 2025-08-15 |  | 0d |  |  |  |  |
| 49 | 1.3.2.1 | Order Windows & Doors | 25d | 2025-07-11 | 2025-08-15 | 44SS | 87.76d | 2.67d | Contractor [0.1%] |  |  |
| 50 | 1.3.2.2 | Order Porch, Plumbing & Electric supply | 8d | 2025-07-11 | 2025-07-23 | 44SS | 132.38d | 30.88d | Contractor [0.1%] |  |  |
| 51 | 1.3.2.3 | Masonry Blocks | 5d | 2025-07-11 | 2025-07-18 | 44SS | 0d |  | Contractor [0.1%] |  |  |
| 52 | 1.3.2.4 | Order concrete | 2d | 2025-07-11 | 2025-07-15 | 44SS | 3d |  | Contractor [0.1%] |  |  |

| ID | WBS | Task | Duration | Start | Finish | Predecessors | Total slack | Free slack | Resources | Work | Cost |
| --- | --- | --- | --- | --- | --- | --- | --- | --- | --- | --- | --- |
| 53 | 1.3.3 | **Foundation** | 68.88d? | 2025-06-16 | 2025-09-22 |  | 126.92d |  |  | 1355h | 189,366.67 |
| 54 | 1.3.3.1 | New Garage | 69.88d | 2025-06-16 | 2025-09-22 |  | 126.79d |  |  | 1040h | 153,695 |
| 55 | 1.3.3.2 | Footing | 4d | 2025-07-30 | 2025-08-04 | 46 | 101.33d | 0.12d | GL-1; GL-2 | 64h | 1,440 |
| 56 | 1.3.3.3 | Pour Concrete footing | 2d | 2025-08-05 | 2025-08-06 | 55 | 101.21d | 0d | GL-4; C [20000%] | 16h | 5,560 |
| 57 | 1.3.3.4 | Build basement foundation | 22.5d | 2025-08-07 | 2025-09-04 | 56 | 101.33d | 0d | M-4; MB [40000%]; GL-6; M-2 | 235h | 18,671.67 |
| 58 | 1.3.3.5 | Milestone Review 2 | 1d? | 2025-09-05 | 2025-09-05 | 57 | 138.92d |  | You [0.1%]; Contractor [0.1%] |  | 10,000 |
| 59 | 1.3.4 | **Construction** | 151.67d? | 2025-07-18 | 2026-02-25 |  | 0d |  | CS-1 | 6504h | 779,534.33 |
| 60 | 1.3.4.1 | Front Porch | 37.5d | 2025-09-04 | 2025-10-28 | 50, 57 | 102.42d |  | Architect [0.1%]; F-1; GL-3; F-2; GL-5 | 960h | 43,200 |
| 61 | 1.3.4.2 | New Roof | 20d | 2025-07-18 | 2025-08-11 | 51, 52 | 0d |  | R-1; R-2; GL-5; GL-6; R | 512h | 52,400 |
| 62 | 1.3.4.3 | Fireplace | 6.67d | 2025-08-11 | 2025-08-19 | 51, 52, 61 | 0d |  | M-1; M-2; GL-1 | 160h | 8,533.33 |
| 63 | 1.3.4.4 | Milestone Review 3 | 1d? | 2025-08-19 | 2025-08-20 | 62 | 0d |  | You [0.1%]; Contractor [0.1%] |  | 10,000 |
| 64 | 1.3.4.5 | Bath/Kitchen Fixtures tiles order | 20d | 2025-08-19 | 2025-09-17 | 63SS | 59d | 44d | Contractor [0.1%] |  |  |
| 65 | 1.3.4.6 | Order Flooring | 30d | 2025-08-19 | 2025-10-01 | 63SS | 71d |  | Contractor [0.1%] |  |  |
| 66 | 1.3.4.7 | Order Lighting | 15d | 2025-08-19 | 2025-09-10 | 63SS | 76d |  | Contractor [0.1%] |  |  |
| 67 | 1.3.4.8 | Order Kitchen Cabinets | 30d | 2025-08-19 | 2025-10-01 | 63SS | 34d |  | Contractor [0.1%] |  |  |
| 68 | 1.3.4.9 | Order Granite Countertops | 30d | 2025-08-19 | 2025-10-01 | 63SS | 52d |  | Contractor [0.1%] |  |  |
| 69 | 1.3.4.10 | Order Heating & Air conditioning | 10d | 2025-08-19 | 2025-09-03 | 63SS | 127.71d | 43.7d | Contractor [0.1%] |  |  |
| 70 | 1.3.4.11 | Order Dry Wall | 2d | 2025-08-19 | 2025-08-21 | 63SS | 14d |  | Contractor [0.1%] |  |  |
| 71 | 1.3.4.12 | Order Insulation | 2d | 2025-08-19 | 2025-08-21 | 63SS | 0d |  | Contractor [0.1%] |  |  |
| 72 | 1.3.4.13 | Window/Door Installation | 9.6d | 2025-08-19 | 2025-10-01 | 49, 62 | 83.01d | 0d | C-1; C-2; F-3; F-4; GL-1; D [200%]; WD [1400%] | 384h | 35,040 |
| 73 | 1.3.4.14 | Electric Installation | 15d | 2025-10-01 | 2025-10-22 | 50, 72 | 83.01d | 0d | EL-1; EL-2 | 240h | 21,600 |
| 74 | 1.3.4.15 | Plumbing Installation | 15d | 2025-10-22 | 2025-11-12 | 50, 73 | 78.01d | 0d | PL-1; PL-2 | 240h | 21,600 |
| 75 | 1.3.4.16 | Heating & Air Conditioning Installation | 13.33d | 2025-11-12 | 2025-12-01 | 69, 74 | 79.01d |  | EL-1; EL-2; EL-3; HAC | 320h | 52,400 |
| 76 | 1.3.4.17 | Installl Insulation | 15d | 2025-08-21 | 2025-09-11 | 71 | 0d |  | II; I | 120h | 17,200 |
| 77 | 1.3.4.18 | Install Dry Wall | 18.75d | 2025-09-11 | 2025-10-02 | 70, 76 | 0d |  | DWT-1; DWT-2; DW [10000%] | 240h | 15,000 |
| 78 | 1.3.4.19 | Tape & Plastering Dry Wall | 7.5d | 2025-10-02 | 2025-10-10 | 77 | 99.12d | 0d | DWT-1; DWT-2 | 96h | 5,280 |
| 79 | 1.3.4.20 | Order Paint | 3d | 2025-10-02 | 2025-10-07 | 77 | 0d |  | Contractor [0.1%] |  |  |
| 80 | 1.3.4.21 | Paint Interior walls & ceiling | 15d | 2025-10-10 | 2025-10-31 | 79, 78 | 99.12d |  | PT-1; PT-2; P [2900%] | 240h | 17,485 |
| 81 | 1.3.4.22 | Install Siding | 30d | 2025-10-07 | 2025-11-18 | 79 | 0d |  | GL-2; C-2; C-3; GL-4 | 960h | 50,400 |
| 82 | 1.3.4.23 | Milestone Review 4 | 1d? | 2025-11-18 | 2025-11-19 | 81 | 0d |  | You [0.1%]; Contractor [0.1%] |  | 10,000 |
| 83 | 1.3.4.24 | Install Bathroom Fixture | 6d | 2025-11-19 | 2025-11-27 | 64, 82 | 15d |  | GL-3; M-3; PL-4; GL-4; M-4; KBF | 240h | 32,280 |
| 84 | 1.3.4.25 | Install Kitchen Cabinets | 20d | 2025-11-19 | 2025-12-17 | 67, 82 | 0d |  | C-3; GL-2; C-4; KC | 480h | 56,200 |
| 85 | 1.3.4.26 | Build & Install Interior Molding | 9.67d | 2025-12-17 | 2025-12-31 | 84 | 59.46d |  | M-3; M-4; C-3; C-5 | 224h | 20,160 |
| 86 | 1.3.4.27 | Install Kitchen & Bathroom Counte tops | 3d | 2025-12-17 | 2025-12-22 | 68, 84 | 0d |  | M-2; C-4; C-5; M-3; CT | 96h | 15,900 |
| 87 | 1.3.4.28 | Install tiles | 9d | 2025-12-22 | 2026-01-02 | 64, 83, 86 | 0d |  | Tiler; GL-4; TL | 96h | 11,560 |
| 88 | 1.3.4.29 | Install lighting | 10d | 2026-01-02 | 2026-01-16 | 66, 87 | 0d |  | EL-2; EL-3; LTG | 160h | 26,000 |
| 89 | 1.3.4.30 | Install Hardwood Flooring | 20d | 2026-01-16 | 2026-02-13 | 65, 88 | 0d |  | C-2; M-2; C-5; M-3; HWF | 640h | 52,816 |
| 90 | 1.3.4.31 | Install Kitchen Appliances | 2d | 2026-02-13 | 2026-02-17 | 89 | 0d |  | KA; EL-3 | 16h | 16,680 |
| 91 | 1.3.4.32 | Clean up Worksite | 6.25d | 2026-02-17 | 2026-02-24 | 90 | 0d |  | GL-2; GL-6 | 80h | 2,800 |
| 92 | 1.3.4.33 | Milestone Review 5 | 1d? | 2026-02-24 | 2026-02-25 | 91 | 0d |  | You [0.1%]; Contractor [0.1%] |  | 10,000 |

Notes:
- 54: This is the subproject that includes building a new detachable two-car garage. It begins after the foundation of the main project and runs parallel with it thereafter.

| ID | WBS | Task | Duration | Start | Finish | Predecessors | Total slack | Resources | Work | Cost |
| --- | --- | --- | --- | --- | --- | --- | --- | --- | --- | --- |
| 93 | 1.3.5 | **Exterior** | 4.12d | 2026-02-25 | 2026-03-03 |  | 0d |  | 61h | 7,030 |
| 94 | 1.3.5.1 | Touch-up Paint | 1d | 2026-02-25 | 2026-02-26 | 92 | 0d | PT-2; PT-1; P | 16h | 1,105 |
| 95 | 1.3.5.2 | Install Rain gutters | 3.12d | 2026-02-26 | 2026-03-03 | 94 | 0d | RG; GL-5; GL-6 | 45h | 5,925 |
| 96 | 1.4 | **Project Close Out** | 18d? | 2026-03-03 | 2026-03-27 |  | 0d |  |  | 10,000 |
| 97 | 1.4.1 | Inspection - Village Inspector & Contractor | 1d | 2026-03-03 | 2026-03-04 | 95 | 0d | Contractor [0.1%]; Village Board Officials [0.1%]; You [0.1%] |  |  |
| 98 | 1.4.2 | Issue Certificate of Occupancy | 1d | 2026-03-04 | 2026-03-05 | 97 | 0d | Village Board Officials [0.1%]; You [0.1%] |  |  |
| 99 | 1.4.3 | Walk Through | 1d | 2026-03-05 | 2026-03-06 | 98 | 0d | Contractor [0.1%]; You [0.1%] |  |  |
| 100 | 1.4.4 | Billing | 10d | 2026-03-06 | 2026-03-20 | 99 | 0d | Contractor [0.1%]; You [0.1%] |  |  |
| 101 | 1.4.5 | Document Gathering | 4d | 2026-03-20 | 2026-03-26 | 100 | 0d | Contractor [0.1%]; You [0.1%] |  |  |
| 102 | 1.4.6 | Milestone Review 6 | 1d? | 2026-03-26 | 2026-03-27 | 101 | 0d | You [0.1%]; Contractor [0.1%] |  | 10,000 |
